# microsoft-project-how-to-create-your-project-plan-in-ms-project

Schedule from MS Project, 2016-10-06 to 2016-12-23, costs in ₫.

## Calendars

- Standard: Mon-Fri 08:00-12:00, 13:00-17:00; Sat-Sun off. Exceptions (off unless hours are given): 2016-10-13 (Columbus Day), 2016-11-11 (Veterans Day), 2016-11-27 (Thanksgiving Holiday).

## Resources

| Resource | Group | Rate |
| --- | --- | --- |
| John | Analysis | 60 |
| Nelly | Analysis | 50 |
| David | Architect | 75 |
| Joe | Developers | 70 |
| Nick | Developers | 60 |
| Justin | Developers | 60 |
| Lisa | Developers | 40 |
| Richard | Testing | 50 |

## Schedule

| ID | WBS | Task | Duration | Start | Finish | Predecessors | Total slack | Free slack | Resources | Work | Cost |
| --- | --- | --- | --- | --- | --- | --- | --- | --- | --- | --- | --- |
| 1 | 1 | **Website Development** | 55d? | 2016-10-06 | 2016-12-23 |  | 0d |  |  | 1464h | 89,800 |
| 2 | 1.1 | **ANALYSIS** | 24d? | 2016-10-06 | 2016-11-09 |  | 0d |  |  | 328h | 19,360 |
| 3 | 1.1.1 | Main Page | 10d | 2016-10-06 | 2016-10-20 |  | 0d |  | John [50%] | 40h | 2,720 |
| 4 | 1.1.2 | Content Page #1 | 3d? | 2016-10-06 | 2016-10-10 |  | 0d |  | Nelly | 24h | 1,200 |
| 5 | 1.1.3 | Content Page #2 | 2d? | 2016-10-11 | 2016-10-12 | 4 | 0d |  | Nelly | 16h | 800 |
| 6 | 1.1.4 | Content Page #3 | 2d? | 2016-10-21 | 2016-10-24 | 3 | 0d |  | John | 16h | 1,120 |
| 7 | 1.1.5 | Author Page | 2d? | 2016-10-14 | 2016-10-17 | 5 | 0d |  | Nelly | 16h | 800 |
| 8 | 1.1.6 | Contact Page | 2d? | 2016-10-25 | 2016-10-26 | 6 | 0d |  | John | 16h | 1,120 |
| 9 | 1.1.7 | Search Page | 7d? | 2016-10-18 | 2016-10-27 | 7 | 2d | 0d | Nelly | 56h | 2,800 |
| 10 | 1.1.8 | Order Page | 6d? | 2016-10-27 | 2016-11-03 | 8 | 0d |  | John | 48h | 3,360 |
| 11 | 1.1.9 | Tracking Page | 4d? | 2016-11-04 | 2016-11-09 | 10 | 0d |  | John | 32h | 2,240 |
| 12 | 1.1.10 | Admin Page | 8d? | 2016-10-28 | 2016-11-08 | 9 | 5d |  | Nelly | 64h | 3,200 |
| 13 | 1.2 | **DESIGN** | 26d? | 2016-10-18 | 2016-11-23 |  | 0d |  |  | 200h | 15,000 |
| 14 | 1.2.1 | Main Page | 4d | 2016-10-21 | 2016-10-26 | 3, 15 | 0d |  | David | 32h | 2,400 |
| 15 | 1.2.2 | Content Page #1 | 2d | 2016-10-19 | 2016-10-20 | 4, 18 | 0d |  | David | 16h | 1,200 |
| 16 | 1.2.3 | Content Page #2 | 1d? | 2016-10-27 | 2016-10-27 | 5, 14 | 0d |  | David | 8h | 600 |
| 17 | 1.2.4 | Content Page #3 | 1d? | 2016-10-28 | 2016-10-28 | 6, 14, 16 | 0d |  | David | 8h | 600 |
| 18 | 1.2.5 | Author Page | 1d? | 2016-10-18 | 2016-10-18 | 7 | 0d |  | David | 8h | 600 |
| 19 | 1.2.6 | Contact Page | 1d? | 2016-10-31 | 2016-10-31 | 8, 17 | 0d |  | David | 8h | 600 |
| 20 | 1.2.7 | Search Page | 4d | 2016-11-01 | 2016-11-07 | 9, 19 | 0d |  | David | 32h | 2,400 |
| 21 | 1.2.8 | Order Page | 3d | 2016-11-08 | 2016-11-10 | 10, 20 | 0d |  | David | 24h | 1,800 |
| 22 | 1.2.9 | Tracking Page | 3d | 2016-11-14 | 2016-11-16 | 11, 21 | 0d |  | David | 24h | 1,800 |
| 23 | 1.2.10 | Admin Page | 5d | 2016-11-17 | 2016-11-23 | 12, 22 | 0d |  | David | 40h | 3,000 |
| 24 | 1.3 | **DEVELOPMENT** | 40d? | 2016-10-21 | 2016-12-16 |  | 4d | 0d |  | 632h | 38,800 |
| 25 | 1.3.1 | Main Page | 12d | 2016-10-27 | 2016-11-14 | 14 | 26d | 0d | Joe | 96h | 6,720 |
| 26 | 1.3.2 | Content Page #1 | 6d | 2016-10-21 | 2016-10-28 | 15 | 38d | 0d | Nick | 48h | 2,880 |
| 27 | 1.3.3 | Content Page #2 | 4d? | 2016-10-28 | 2016-11-02 | 16 | 32d | 0d | Justin | 32h | 1,920 |
| 28 | 1.3.4 | Content Page #3 | 4d? | 2016-10-31 | 2016-11-07 | 17 | 30d | 0d | Lisa | 32h | 1,280 |
| 29 | 1.3.5 | Author Page | 3d? | 2016-10-31 | 2016-11-02 | 18, 26 | 35d | 0d | Nick | 24h | 1,440 |
| 30 | 1.3.6 | Contact Page | 3d? | 2016-11-03 | 2016-11-07 | 19, 27 | 32d | 0d | Justin | 24h | 1,440 |
| 31 | 1.3.7 | Search Page | 14d | 2016-11-08 | 2016-11-29 | 20 | 4.5d | 0d | Nick | 112h | 6,720 |
| 32 | 1.3.8 | Order Page | 11d | 2016-11-14 | 2016-11-29 | 21 | 13.5d | 4d | Justin | 88h | 5,280 |
| 33 | 1.3.9 | Tracking Page | 5d | 2016-11-21 | 2016-11-29 | 22 | 16d | 10d | Lisa | 40h | 1,600 |
| 34 | 1.3.10 | Admin Page | 17d | 2016-11-24 | 2016-12-16 | 23 | 0d |  | Joe | 136h | 9,520 |

| ID | WBS | Task | Type | Duration | Start | Finish | Predecessors | Total slack | Free slack | Resources | Work | Cost |
| --- | --- | --- | --- | --- | --- | --- | --- | --- | --- | --- | --- | --- |
| 35 | 1.4 | **TESTING** |  | 39d? | 2016-10-31 | 2016-12-23 |  | 0d |  |  | 176h | 8,800 |
| 36 | 1.4.1 | Main Page |  | 3d | 2016-11-15 | 2016-11-17 | 25 | 26d | 0d | Richard | 24h | 1,200 |
| 37 | 1.4.2 | Content Page #1 |  | 1.5d | 2016-10-31 | 2016-11-01 | 26 | 37.5d | 0d | Richard | 12h | 600 |
| 38 | 1.4.3 | Content Page #2 |  | 1d? | 2016-11-03 | 2016-11-03 | 27 | 35d | 0d | Richard | 8h | 400 |
| 39 | 1.4.4 | Content Page #3 |  | 1d? | 2016-11-08 | 2016-11-08 | 28 | 32d | 0d | Richard | 8h | 400 |
| 40 | 1.4.5 | Author Page |  | 1d? | 2016-11-09 | 2016-11-09 | 29, 39 | 30d | 0d | Richard | 8h | 400 |
| 41 | 1.4.6 | Contact Page |  | 1d? | 2016-11-10 | 2016-11-10 | 30, 40 | 30d | 0d | Richard | 8h | 400 |
| 42 | 1.4.7 | Search Page |  | 4d | 2016-11-30 | 2016-12-05 | 31 | 14d | 0d | Richard | 32h | 1,600 |
| 43 | 1.4.8 | Order Page |  | 3d | 2016-12-06 | 2016-12-13 | 32, 42 | 6.5d | 0d | Richard | 24h | 1,200 |
| 44 | 1.4.9 | Tracking Page |  | 1.5d | 2016-12-14 | 2016-12-15 | 33, 43 | 6.5d | 0d | Richard | 12h | 600 |
| 45 | 1.4.10 | Admin Page |  | 5d | 2016-12-19 | 2016-12-23 | 34 | 0d |  | Richard | 40h | 2,000 |
| 46 | 1.5 | **BUGFIX** |  | 36d? | 2016-11-03 | 2016-12-23 |  | 0d |  |  | 128h | 7,840 |
| 47 | 1.5.1 | Main Page |  | 2d? | 2016-11-16 | 2016-11-17 | 36FF | 26d |  | Joe | 16h | 1,120 |
| 48 | 1.5.2 | Content Page #1 |  | 1d? | 2016-11-03 | 2016-11-03 | 37FF, 29 | 35d |  | Nick | 8h | 480 |
| 49 | 1.5.3 | Content Page #2 |  | 1d? | 2016-11-03 | 2016-11-03 | 38FF | 35d |  | Justin | 8h | 480 |
| 50 | 1.5.4 | Content Page #3 |  | 1d? | 2016-11-08 | 2016-11-08 | 39FF | 30d |  | Lisa | 8h | 320 |
| 51 | 1.5.5 | Author Page |  | 1d? | 2016-11-09 | 2016-11-09 | 40FF | 31d |  | Nick [50%] | 4h | 240 |
| 52 | 1.5.6 | Contact Page |  | 1d? | 2016-11-10 | 2016-11-10 | 41FF | 30d |  | Justin [50%] | 4h | 240 |
| 53 | 1.5.7 | Search Page |  | 3d? | 2016-12-01 | 2016-12-05 | 42FF | 14d |  | Nick | 24h | 1,440 |
| 54 | 1.5.8 | Order Page |  | 2d? | 2016-12-12 | 2016-12-13 | 43FF | 8d |  | Justin | 16h | 960 |
| 55 | 1.5.9 | Tracking Page |  | 1d? | 2016-12-14 | 2016-12-15 | 44FF | 4.5d |  | Lisa | 8h | 320 |
| 56 | 1.5.10 | Admin Page |  | 4d? | 2016-12-20 | 2016-12-23 | 45FF | 0d |  | Joe | 32h | 2,240 |
| 57 | 1.6 | **MILESTONE** |  | 31d | 2016-11-09 | 2016-12-23 |  | 0d |  |  |  |  |
| 58 | 1.6.1 | Finish of Analysis Phase | milestone | 0d | 2016-11-09 | 2016-11-09 | 2 | 29d |  |  |  |  |
| 59 | 1.6.2 | Finish of Design Phase | milestone | 0d | 2016-11-23 | 2016-11-23 | 13 | 22d |  |  |  |  |
| 60 | 1.6.3 | Finish of Development Phase | milestone | 0d | 2016-12-16 | 2016-12-16 | 24 | 5d |  |  |  |  |
| 61 | 1.6.4 | Finish of Testing Phase | milestone | 0d | 2016-12-23 | 2016-12-23 | 35 | 0d |  |  |  |  |
| 62 | 1.6.5 | Finish of BugFix Phase | milestone | 0d | 2016-12-23 | 2016-12-23 | 46 | 0d |  |  |  |  |
